Phase,Sub-Phase,Task ID,Dependencies,Task,Start Date,End Date,Objective,Milestone,Status
1,PhD Proposal,T1.0,,Meet with Advisor to Finalize Revised Timeline,2025-09-09,2025-09-13,Finalize revised timeline with advisor,false,Not Started
1,PhD Proposal,T1.1,T1.0,Draft Timeline v1,2025-08-29,2025-09-02,Draft comprehensive timeline for advisor review with printed and digital copies,false,Not Started
1,PhD Proposal,T1.2,T1.0,Develop Specific Aims & Outline,2025-09-02,2025-09-08,Develop comprehensive proposal outline following BME format requirements for committee review,false,Not Started
1,PhD Proposal,T1.3,T1.2,Submit Outline to Advisor,2025-09-05,2025-09-09,Submit detailed proposal outline to advisor for review and approval,false,Not Started
1,PhD Proposal,T1.4,,Define Committee & Schedule Exam,2025-09-10,2025-09-14,Identify committee members and confirm availability for oral exam scheduling,false,Not Started
1,PhD Proposal,T1.5,,Write Research Strategy,2025-09-15,2025-09-25,Write comprehensive Research Strategy section following BME format requirements,false,Not Started
1,PhD Proposal,T1.6,T1.0,Condense Proposal Draft,2025-10-14,2025-10-25,Write 12-page Research Strategy with preliminary data,false,Not Started
1,PhD Proposal,T1.6a,T1.4,Confirm Exam Date,2025-09-28,2025-10-05,Confirm oral exam date and ensure committee receives proposal with sufficient notice,false,Not Started
1,PhD Proposal,T1.7,T1.6,Finalize Proposal & Schedule,2025-10-28,2025-11-08,Finalize draft and schedule defense with committee,false,Not Started
1,PhD Proposal,T1.7a,T1.2,Write Specific Aims & Research Strategy,2025-10-07,2025-10-13,Write comprehensive Specific Aims and Research Strategy sections for PhD proposal,false,Not Started
1,PhD Proposal,T1.8,T1.7,Send Proposal to Committee,2025-11-12,2025-12-01,Distribute proposal to committee,false,Not Started
1,PhD Proposal,T1.8a,,Write Methods & Timeline,2025-11-11,2025-11-18,Write detailed Methods and project timeline sections for proposal,false,Not Started
1,PhD Proposal,T1.9,T1.8,Create Proposal Presentation,2025-12-01,2025-12-16,Create a presentation for oral defense,false,Not Started
1,PhD Proposal,T1.9a,"T1.8a,T1.14",Complete Proposal Document,2025-12-01,2025-12-07,Complete comprehensive proposal document with proper formatting for committee review,High,
1,PhD Proposal,T1.10,T1.M1,Submit Final Proposal Document,2025-12-17,2025-12-20,Submit Final Proposal Document to Achieve Candidacy,false,Not Started
1,PhD Proposal,T1.10a,"T1.9a,T1.6a",Email Proposal to Committee,2025-11-28,2025-12-05,Distribute final proposal to committee members with sufficient advance notice,High,
1,PhD Proposal,T1.11,T1.10,Create Presentation,2025-12-08,2025-12-18,Create comprehensive presentation and practice oral exam delivery,false,Not Started
1,PhD Proposal,T1.12,T1.M1,Incorporate Revisions,2025-12-23,2026-01-06,Address committee feedback and obtain final approval for proposal,false,Not Started
1,Laser System,T1.13,,Align Seed Laser,2025-09-02,2025-09-06,Align seed laser to achieve >=30 mW output in fiber core for pre-pump optimization,false,Not Started
1,Laser System,T1.14,T1.13,Restore Amplified Output,2025-09-09,2025-09-16,Restore amplified laser output to >=130 mW benchmark performance level,false,Not Started
1,Laser System,T1.15,T1.14,Verify Pulse Duration,2025-10-01,2025-10-07,Verify pulse compression to <=200 fs duration and document specifications,false,Not Started
1,Microscope Setup,T1.16,T1.15,Align Imaging System,2025-10-08,2025-10-14,Align imaging system using USAF target for optimal resolution validation,false,Not Started
1,Microscope Setup,T1.17,T1.16,Confirm Live Imaging Requirements,2025-10-15,2025-10-21,Validate laser and optics system meets live imaging performance requirements,false,Not Started
1,Microscope Setup,T1.18,T1.16,Align Laser Through Microscope,2025-09-26,2025-09-30,Align laser beam through microscope optical system,false,Not Started
1,Microscope Setup,T1.19,T1.18,Image USAF Target,2025-10-01,2025-10-05,Image USAF target to validate optical resolution performance,false,Not Started
1,Microscope Setup,T1.20,T1.19,Acquire Preliminary In Vivo Images,2025-10-07,2025-10-11,Acquire preliminary in vivo imaging data with 6-panel tiled configuration,false,Not Started
1,Committee Management,T1.21,,Submit Annual Progress Report,2025-09-03,2025-09-07,Submit annual progress review report to department,false,Not Started
1,Committee Management,T1.22,,Update Committee Membership,2025-09-13,2025-09-23,Update committee membership and file necessary change forms if required,false,Not Started
1,Committee Management,T1.23,,Confirm Doctoral Candidacy,2025-09-06,2025-09-30,Verify and confirm doctoral candidacy status,false,Not Started
1,PhD Proposal,T1.M1,"T1.9,T1.22",PhD Proposal Exam - Defend proposal in oral examination,2025-12-19,2025-12-22,Successfully defend PhD proposal in oral examination before committee,Critical,
2,Aim 1 - AAV-based Vascular Imaging,T2.1,T1.5,Plan Pilot Mice Cohort,2025-10-14,2025-10-18,Plan pilot mouse cohort with IACUC protocol confirmation and surgery scheduling,false,Not Started
2,Aim 1 - AAV-based Vascular Imaging,T2.2,T2.1,Design & Order AAV Vectors,2025-10-21,2025-11-04,Design and order AAV vectors for vascular and neuronal labeling,false,Not Started
2,Aim 1 - AAV-based Vascular Imaging,T2.3,T2.2,Receive AAV Vectors,2025-12-20,2026-01-17,Receive AAV vectors and prepare for in vivo injections,false,Not Started
2,Aim 1 - AAV-based Vascular Imaging,T2.4,"T1.17,T2.3,T1.12",Install Cranial Windows & Inject AAV,2026-02-01,2026-02-26,Perform cranial window surgeries and AAV injections in pilot mice cohort,false,
2,Aim 1 - AAV-based Vascular Imaging,T2.5,T2.4,Monitor & Medicate Mice,2026-02-27,2026-03-25,Monitor post-operative recovery and maintain appropriate analgesia,false,Not Started
2,Aim 1 - AAV-based Vascular Imaging,T2.6,T2.5,Acquire In Vivo Images,2026-03-28,2026-04-15,Acquire in vivo two-photon images comparing AAV and dye labeling methods,false,Not Started
2,Aim 1 - AAV-based Vascular Imaging,T2.7,T2.6,Complete Pilot Datasets,2026-04-16,2026-04-22,Complete comprehensive two-photon imaging datasets from pilot cohort,false,Not Started
2,Aim 1 - AAV-based Vascular Imaging,T2.8,T2.6,Process Pilot Data,2026-04-21,2026-04-28,Process pilot imaging data and optimize imaging protocols,false,Not Started
2,Aim 2 - Dual-channel Imaging Platform,T2.9,T2.8,Design U-Net Architecture,2026-05-01,2026-05-15,Design U-Net architecture and prepare training datasets for vascular segmentation,false,Not Started
2,Aim 2 - Dual-channel Imaging Platform,T2.10,T2.9,Implement U-Net Pipeline,2026-05-28,2026-06-25,Implement and validate U-Net segmentation pipeline on pilot data,false,Not Started
2,Aim 2 - Dual-channel Imaging Platform,T2.11,T2.7,Configure Dual-Channel Imaging,2026-04-19,2026-05-10,Configure dual-channel two-photon imaging system with spectral separation,false,Not Started
2,Aim 2 - Dual-channel Imaging Platform,T2.12,T2.11,Configure LSCI,2026-05-18,2026-06-20,Configure Laser Speckle Contrast Imaging for blood flow measurements,false,Not Started
2,Aim 2 - Dual-channel Imaging Platform,T2.13,T2.7,Design Enhanced AAV,2026-04-19,2026-07-15,Design and order enhanced AAV vectors for improved dual-label imaging,false,Not Started
2,Aim 2 - Dual-channel Imaging Platform,T2.14,T2.13,Receive Enhanced AAV,2026-07-18,2026-07-22,Receive enhanced AAV vectors and prepare for in vivo validation,false,Not Started
2,Aim 2 - Dual-channel Imaging Platform,T2.15,T2.11,Compare Imaging Methods,2026-05-23,2026-06-22,Compare imaging performance across different labeling methods in vivo,false,Not Started
2,Aim 3 - Stroke Study & Analysis,T2.16,T2.15,Establish Stroke Model,2026-06-18,2026-06-23,Establish photothrombotic stroke model with IACUC approval,false,Not Started
2,Aim 3 - Stroke Study & Analysis,T2.17,T2.16,Induce Stroke,2026-06-26,2026-06-30,Induce photothrombotic stroke in study cohort,false,Not Started
2,Aim 3 - Stroke Study & Analysis,T2.18,T2.17,Acute Phase Imaging,2026-07-08,2026-07-13,Acquire acute-phase imaging data (0-1 week post-stroke),false,Not Started
2,Aim 3 - Stroke Study & Analysis,T2.19,T2.18,Transition Phase Imaging,2026-07-20,2026-07-25,Acquire transition-phase imaging data (2-4 weeks post-stroke),false,Not Started
2,Aim 3 - Stroke Study & Analysis,T2.20,T2.19,Early Chronic Phase Imaging,2026-08-19,2026-08-24,Acquire early chronic-phase imaging data (5-8 weeks post-stroke),false,Not Started
2,Aim 3 - Stroke Study & Analysis,T2.21,T2.20,Extended Chronic Imaging,2026-09-16,2026-09-20,Acquire extended chronic-phase imaging data if required,false,Not Started
2,Aim 3 - Stroke Study & Analysis,T2.22,T2.10,Adapt ML Pipeline,2026-07-14,2026-08-15,Adapt ML pipeline for stroke imaging data analysis,false,Not Started
2,Aim 3 - Stroke Study & Analysis,T2.23,T2.22,Optimize ML Pipeline,2026-08-18,2026-09-15,Optimize and validate ML segmentation performance on stroke data,false,Not Started
2,Aim 3 - Stroke Study & Analysis,T2.24,T2.21,Complete Longitudinal Imaging,2026-09-21,2026-09-27,Complete comprehensive longitudinal stroke imaging study,false,Not Started
2,Aim 3 - Stroke Study & Analysis,T2.25,"T2.18,T2.19,T2.20,T2.21",Integrate LSCI Data,2026-09-26,2026-10-25,Integrate Laser Speckle Contrast Imaging flow data with two-photon data,false,Not Started
2,Aim 3 - Stroke Study & Analysis,T2.26,T2.25,Analyze Stroke Data,2026-10-26,2026-12-09,Analyze neurovascular coupling and microvascular changes post-stroke,false,Not Started
2,Data Management & Analysis,T2.27,,Maintain Rig Log Q1 2026,2025-09-01,2025-12-31,Maintain equipment maintenance log for Q1 2026,false,Not Started
2,Data Management & Analysis,T2.28,T2.27,Maintain Rig Log Q2 2026,2026-01-01,2026-03-31,Maintain equipment maintenance log for Q2 2026,false,Not Started
2,Data Management & Analysis,T2.29,T2.28,Maintain Rig Log Q3 2026,2026-04-01,2026-06-30,Maintain equipment maintenance log for Q3 2026,false,Not Started
2,Data Management & Analysis,T2.30,T2.29,Maintain Rig Log Q4 2026,2026-07-01,2026-09-30,Maintain equipment maintenance log for Q4 2026,false,Not Started
2,Data Management & Analysis,T2.31,T2.30,Maintain Rig Log Q1 2027,2026-10-01,2026-12-31,Maintain equipment maintenance log for Q1 2027,false,Not Started
2,Data Management & Analysis,T2.32,T2.31,Maintain Rig Log Q2 2027,2027-01-01,2027-03-31,Maintain equipment maintenance log for Q2 2027,false,Not Started
2,Data Management & Analysis,T2.33,T2.32,Maintain Rig Log Q3 2027,2027-04-01,2027-06-30,Maintain equipment maintenance log for Q3 2027,false,Not Started
2,Data Management & Analysis,T2.34,T2.33,Maintain Rig Log Q4 2027,2027-07-01,2027-08-31,Maintain equipment maintenance log for Q4 2027,false,Not Started
2,Data Management & Analysis,T2.35,,Implement Automated Backups,2025-10-01,2025-12-31,Implement automated data backup and quality control system,false,Not Started
2,Data Management & Analysis,T2.36,T2.35,Maintain Automated Backups,2026-01-01,2027-08-31,Maintain automated data backup and quality control system,false,Not Started
2,Data Management & Analysis,T2.37,,Maintain Surgical Training,2025-10-01,2026-06-01,Maintain surgical training and ensure IACUC compliance,false,Not Started
2,Data Management & Analysis,T2.M1,T2.12,Dual-Color Platform Operational - Achieve operational status of the dual-color platform,2026-07-18,2026-07-18,Dual-color imaging platform achieves operational status,true,Not Started
2,Data Management & Analysis,T2.M2,T2.26,Data Acquisition Complete - Complete all planned imaging studies,2026-12-09,2026-12-09,Complete comprehensive data acquisition for all research aims,true,Not Started
3,Methodology Paper,T3.1,T2.7,Write Methodology Manuscript,2026-04-19,2026-07-15,Write comprehensive methodology manuscript covering AAV-based vascular imaging approach,false,Not Started
3,Methodology Paper,T3.2,T3.1,Submit Methodology Paper,2026-07-18,2026-07-22,Submit methodology manuscript to appropriate journal,false,Not Started
3,SLAVV-T Development,T3.3,T2.6,Develop SLAVV-T Codebase,2026-08-11,2026-11-10,Develop improved codebase for temporal analysis,false,Not Started
3,SLAVV-T Development,T3.4,T3.3,Draft SLAVV-T Manuscript,2026-11-11,2026-12-21,Draft SLAVV-T manuscript,false,Not Started
3,SLAVV-T Development,T3.5,T3.4,Submit SLAVV-T Manuscript,2026-12-22,2027-02-20,Submit MS on SLAVV-T an improved temporal analysis method,false,Not Started
3,Research Paper,T3.6,T2.26,Prepare Conference Presentation,2026-12-10,2026-12-16,Prepare conference presentation with research results,false,Not Started
3,Research Paper,T3.7,T2.26,Write Research Paper,2026-12-10,2026-12-16,Write comprehensive research paper covering dual-color platform and stroke findings,false,Not Started
3,Research Paper,T3.8,T3.7,Submit Research Paper,2026-12-19,2026-12-23,Submit second research manuscript to appropriate journal,false,Not Started
3,AR Platform Development,T3.9,,AR Vascular Platform,2026-08-01,2027-12-31,Develop AR platform and draft methods paper,false,Not Started
3,Manuscript Submissions,T3.M1,T3.8,Manuscript Submissions Complete - All planned manuscripts submitted,2026-12-23,2026-12-23,Complete all planned manuscript submissions,true,Not Started
4,Dissertation Writing,T4.1,T1.12,Complete Progress Review,2026-09-01,2026-09-07,Complete annual progress review for 2026,false,Not Started
4,Dissertation Writing,T4.2,T2.26,Draft Dissertation Introduction & Methods,2027-01-01,2027-02-15,Complete the draft of the dissertation introduction and methods,false,Not Started
4,Dissertation Writing,T4.2a,T3.2,Draft Aim 1 Chapter,2027-02-16,2027-03-15,Draft Aim 1 Chapter utilizing the completed manuscript,false,Not Started
4,Dissertation Writing,T4.2b,T3.8,Draft Aim 2/3 Chapter,2027-03-16,2027-04-15,Draft Aim 2/3 Chapter utilizing the completed manuscript,false,Not Started
4,Dissertation Writing,T4.3,T1.12,Write Introduction Chapter,2026-12-19,2027-01-31,Write comprehensive Introduction chapter with literature review and study rationale,false,Not Started
4,Dissertation Writing,T4.4,T1.12,Write Methods & Results Chapters,2027-02-03,2027-05-15,Write comprehensive Methods and Results chapters for all research aims,false,Not Started
4,Dissertation Writing,T4.5,T4.2b,Draft Dissertation Conclusions,2027-04-16,2027-05-15,Draft Dissertation Conclusions,false,Not Started
4,Dissertation Writing,T4.5a,T1.12,Write Discussion & Conclusions,2027-02-03,2027-06-15,Write comprehensive Discussion and Conclusions chapters,false,Not Started
4,Committee Review & Defense,T4.6,"T4.3,T4.4,T4.5",Complete Dissertation Draft,2027-06-19,2027-06-30,false,,
4,Committee Review & Defense,T4.M1a,T4.5,Complete Dissertation Draft,2027-05-16,2027-05-16,Complete dissertation draft for committee review,true,Not Started
4,Committee Review & Defense,T4.5b,T4.M1a,Final Committee Meeting,2027-05-17,2027-05-29,Final Committee Meeting,false,Not Started
4,Committee Review & Defense,T4.6a,T4.5b,Final Revisions,2027-05-30,2027-06-30,Incorporate Final Revisions,false,Not Started
4,Committee Review & Defense,T4.7,T4.6a,Defend Dissertation,2027-07-17,2027-07-20,Successfully defend PhD dissertation in oral examination,false,Not Started
4,Committee Review & Defense,T4.8,T4.7,Incorporate Committee Feedback,2027-07-21,2027-08-03,Address committee feedback and obtain final approval,false,Not Started
4,Final Submission & Graduation,T4.7a,T4.M2,Final Submission,2027-07-16,2027-07-31,Submit final dissertation,false,Not Started
4,Final Submission & Graduation,T4.9,T4.8,Submit Final Dissertation,2027-08-05,2027-08-11,Submit final dissertation and complete graduation requirements,false,Not Started
4,Final Submission & Graduation,T4.10,,Complete Teaching Assistant Requirement,2025-09-04,2026-08-31,Complete Teaching Assistant requirement for BME program,false,Not Started
4,Final Submission & Graduation,T4.11,,Maintain Spring 2026 Registration,2026-01-01,2026-05-31,Maintain continuous registration for Spring 2026,false,Not Started
4,Final Submission & Graduation,T4.12,T4.11,Maintain Fall 2026 Registration,2026-09-01,2026-12-31,Maintain continuous registration for Fall 2026,false,Not Started
4,Final Submission & Graduation,T4.13,T4.12,Maintain Spring 2027 Registration,2027-01-01,2027-05-31,Maintain continuous registration for Spring 2027,false,Not Started
4,Final Submission & Graduation,T4.14,T4.13,Maintain Summer 2027 Registration,2027-06-01,2027-08-31,Maintain continuous registration for Summer 2027,false,Not Started
4,Final Submission & Graduation,T4.15,T4.2,Submit Graduation Application,2027-01-01,2027-01-15,Submit graduation application for Summer 2027,false,Not Started
4,Final Submission & Graduation,T4.16,T4.6,Submit Final Oral Exam Request,2027-06-01,2027-06-15,Submit final oral exam request form,false,Not Started
4,Final Submission & Graduation,T4.17,,SPIE Student Chapter Activities,2025-09-08,2026-12-31,Plan and execute SPIE Student Chapter activities,false,Not Started
4,Final Submission & Graduation,T4.18,,Maintain Lab Responsibilities,2025-09-10,2027-08-31,Maintain lab culture responsibilities and equipment ownership,false,Not Started
4,Final Submission & Graduation,T4.M1,T4.6,Dissertation Complete - Complete dissertation draft for committee review,2027-06-30,2027-06-30,Complete comprehensive dissertation draft,true,Not Started
4,Final Submission & Graduation,T4.M2,T4.7,PhD Defense - Successfully defend PhD dissertation,2027-07-17,2027-07-17,Successfully defend PhD dissertation,true,Not Started
4,Final Submission & Graduation,T4.M3,T4.9,Graduation - Complete PhD program and graduate,2027-08-11,2027-08-11,Complete PhD program and graduate,true,Not Started
